# FlexiTime

Schedule from GanttProject, 2005-01-04 to 2005-02-24.
FlexiTime
Gestion des emplois du Temps / Projet de Génie Logiciel / Informatique Réseaux 3° année / Ingénieurs 2000 - Université de Marne-La-Vallée

## Calendars

- Project calendar: Mon-Fri working; Sat-Sun off.

## Resources

| Resource | Group |
| --- | --- |
| Jérôme GUERS |  |
| Fabien APPERT | Secrétaire + Responsable Client |
| Adrien BOUVET | Site Web + Responsable Qualité |
| Valère FOREL | Responsable Développement & test |
| Guillaume GUERRIN | Responsable technique |
| Prâsad RAMASSAMY | Responsable Interface Graphique |

## Schedule

| ID | WBS | Task | Duration | Start | Finish | Complete | Resources |
| --- | --- | --- | --- | --- | --- | --- | --- |
| 1 | 1 | **Développement** | 30d | 2005-01-04 | 2005-02-14 | 44% |  |
| 2 | 1.1 | **Préparation des outils de travail** | 9d | 2005-01-04 | 2005-01-14 | 100% |  |
| 3 | 1.1.1 | Finition du FlexiGuide | 6d | 2005-01-04 | 2005-01-11 | 100% | Jérôme GUERS [20%] |
| 4 | 1.1.2 | Mise en place des serveurs | 3d | 2005-01-10 | 2005-01-12 | 100% | Adrien BOUVET |
| 5 | 1.2 | **flexitime.common** | 6d | 2005-01-04 | 2005-01-11 | 75% |  |
| 6 | 1.2.1 | **flexitime.common.data** | 6d | 2005-01-04 | 2005-01-11 | 83% |  |
| 7 | 1.2.1.1 | Dév flexitime.common.data | 6d | 2005-01-04 | 2005-01-11 | 100% | Adrien BOUVET |
| 8 | 1.2.1.2 | Test flexitime.common.data | 3d | 2005-01-04 | 2005-01-06 | 50% | Guillaume GUERRIN [50%] |
| 9 | 1.2.2 | **flexitime.common.tools** | 3d | 2005-01-04 | 2005-01-06 | 75% |  |
| 10 | 1.2.2.1 | Dev flexitime.common.tools | 3d | 2005-01-04 | 2005-01-06 | 100% | Valère FOREL |
| 11 | 1.2.2.2 | Test flexitime.common.tools | 3d | 2005-01-04 | 2005-01-06 | 50% | Guillaume GUERRIN [50%] |
| 12 | 1.2.3 | **flexitime.common.rmi** | 3d | 2005-01-04 | 2005-01-06 | 100% |  |
| 13 | 1.2.3.1 | Dev flexitime.common.rmi | 3d | 2005-01-04 | 2005-01-06 | 100% | Prâsad RAMASSAMY [30%] |
| 14 | 1.2.4 | **flexitime.common.event** | 3d | 2005-01-04 | 2005-01-06 | 44% |  |
| 15 | 1.2.4.1 | Dev flexitime.common.event | 3d | 2005-01-04 | 2005-01-06 | 90% | Prâsad RAMASSAMY [20%] |
| 16 | 1.2.4.2 | Test flexitime.common.event | 3d | 2005-01-04 | 2005-01-06 |  | Prâsad RAMASSAMY [20%] |
| 17 | 1.3 | **flexitime.server** | 26d | 2005-01-07 | 2005-02-11 | 35% |  |
| 18 | 1.3.1 | flexitime.server.main | 4d | 2005-01-26 | 2005-01-31 |  |  |
| 19 | 1.3.2 | **flexitime.server.core** | 26d | 2005-01-07 | 2005-02-11 | 17% |  |
| 20 | 1.3.2.1 | Dev flexitime.server.core | 4d | 2005-01-11 | 2005-01-14 | 100% | Valère FOREL |
| 21 | 1.3.2.2 | Dev flexitime.server.core V2 | 5d | 2005-01-17 | 2005-01-21 | 100% | Prâsad RAMASSAMY |
| 22 | 1.3.2.3 | Test flexitime.server.core | 4d | 2005-01-29 | 2005-02-03 |  |  |
| 23 | 1.3.2.4 | **flexitime.server.core.management** | 16d | 2005-01-15 | 2005-02-07 |  |  |
| 24 | 1.3.2.4.1 | Dev flexitime.server.core.management | 2d | 2005-01-15 | 2005-01-18 |  | Valère FOREL |
| 25 | 1.3.2.4.2 | Test flexitime.server.core.management | 2d | 2005-01-29 | 2005-02-01 |  |  |

Notes:
- 3: Modification des erreurs signalées / Recherche du plugin 1.5 / Ajout de parties éventuelles / Recherche du fonctionnement des TAGS SVN / Résolution des pb d'affichage ss eclipse / Finalisation du fichier project.xml / Intégration des librairie
- 4: TomCat / ssh

| ID | WBS | Task | Duration | Start | Finish | Complete | Resources |
| --- | --- | --- | --- | --- | --- | --- | --- |
| 26 | 1.3.2.5 | **flexitime.server.core.admin** | 6d | 2005-01-07 | 2005-01-14 |  |  |
| 27 | 1.3.2.5.1 | Dev flexitime.server.core.admin | 6d | 2005-01-07 | 2005-01-14 |  | Guillaume GUERRIN [25%] |
| 28 | 1.3.2.5.2 | Test flexitime.server.core.admin | 6d | 2005-01-07 | 2005-01-14 |  | Guillaume GUERRIN [25%] |
| 29 | 1.3.3 | **flexitime.server.io** | 26d | 2005-01-07 | 2005-02-11 | 51% |  |
| 30 | 1.3.3.1 | **flexitime.server.io.FlexiLDAP** | 3d | 2005-01-10 | 2005-01-12 | 89% |  |
| 31 | 1.3.3.1.1 | Test flexitime.server.io.FlexiLDAP | 3d | 2005-01-10 | 2005-01-12 | 90% | Guillaume GUERRIN [50%] |
| 32 | 1.3.3.2 | **flexitime.server.io.FlexiFOP** | 4d | 2005-01-29 | 2005-02-03 |  |  |
| 33 | 1.3.3.2.1 | Dev flexitime.server.io.FlexiFOP | 4d | 2005-01-29 | 2005-02-03 |  |  |
| 34 | 1.3.3.2.2 | XSLT flexitime.server.io.FlexiFOP | 3d | 2005-01-29 | 2005-02-02 |  |  |
| 35 | 1.3.3.2.3 | Test flexitime.server.io.FlexiFOP | 4d | 2005-01-29 | 2005-02-03 |  |  |
| 36 | 1.3.3.3 | **flexitime.server.io.FleXML** | 4d | 2005-01-29 | 2005-02-03 |  |  |
| 37 | 1.3.3.3.1 | Dev flexitime.server.io.FleXML | 4d | 2005-01-29 | 2005-02-03 |  |  |
| 38 | 1.3.3.3.2 | Test flexitime.server.io.FleXML | 2d | 2005-01-29 | 2005-02-01 |  |  |
| 39 | 1.3.3.4 | **flexitime.server.io.FlexiPrint** | 4d | 2005-01-07 | 2005-01-12 | 100% |  |
| 40 | 1.3.3.4.1 | Test flexitime.server.io.FlexiPrint | 4d | 2005-01-07 | 2005-01-12 | 100% | Valère FOREL [50%] |
| 41 | 1.3.3.5 | **flexitime.server.io.FlexiMail** | 4d | 2005-01-07 | 2005-01-12 | 100% |  |
| 42 | 1.3.3.5.1 | Test flexitime.server.io.FlexiMail | 4d | 2005-01-07 | 2005-01-12 | 100% | Valère FOREL [50%] |
| 43 | 1.3.3.6 | **flexitime.server.io.storage** | 10d | 2005-01-07 | 2005-01-20 | 62% |  |
| 44 | 1.3.3.6.1 | Dev flexitime.server.io.storage | 10d | 2005-01-07 | 2005-01-20 | 100% | Prâsad RAMASSAMY [50%] |
| 45 | 1.3.3.6.2 | Test flexitime.server.io.storage | 6d | 2005-01-11 | 2005-01-18 |  | Prâsad RAMASSAMY [50%] |
| 46 | 1.4 | **flexitime.richClient** | 27d | 2005-01-04 | 2005-02-09 | 55% |  |
| 47 | 1.4.1 | flexitime.richClient.main | 7d | 2005-01-17 | 2005-01-25 | 50% | Adrien BOUVET |
| 48 | 1.4.2 | **flexitime.richClient.models** | 14d | 2005-01-17 | 2005-02-03 | 32% |  |
| 49 | 1.4.2.1 | Dev flexitime.richClient.models | 9d | 2005-01-17 | 2005-01-27 | 50% | Guillaume GUERRIN [50%]; Fabien APPERT |
| 50 | 1.4.2.2 | Test flexitime.richClient.models | 5d | 2005-01-26 | 2005-02-01 |  |  |

| ID | WBS | Task | Duration | Start | Finish | Complete | Resources |
| --- | --- | --- | --- | --- | --- | --- | --- |
| 51 | 1.4.3 | **flexitime.richClient.gui** | 25d | 2005-01-04 | 2005-02-07 | 63% |  |
| 52 | 1.4.3.1 | flexitime.richClient.gui.actions | 4d | 2005-01-13 | 2005-01-18 | 50% | Guillaume GUERRIN |
| 53 | 1.4.3.2 | **flexitime.richClient.gui.panel** | 22d | 2005-01-04 | 2005-02-02 | 70% |  |
| 54 | 1.4.3.2.1 | flexitime.richClient.gui.panel.management | 9d | 2005-01-17 | 2005-01-27 | 70% | Guillaume GUERRIN [50%] |
| 55 | 1.4.3.2.2 | flexitime.richClient.gui.panel.exploitation | 22d | 2005-01-04 | 2005-02-02 | 70% | Fabien APPERT |
| 56 | 1.4.3.3 | flexitime.richClient.gui.views | 5d | 2005-01-24 | 2005-01-28 |  | Adrien BOUVET |
| 57 | 1.5 | flexitime.ligthClient | 9d | 2005-01-17 | 2005-01-27 | 50% | Valère FOREL |
| 58 | 1.6 | **Validation de l'avancement et du fonctionnement** | 30d | 2005-01-04 | 2005-02-14 | 7% |  |
| 59 | 1.6.1 | Mise en place du suivi sur Wiki | 2d | 2005-01-04 | 2005-01-05 | 100% | Jérôme GUERS [50%] |
| 60 | 1.6.2 | **Rédaction des fiches de bugs** | 5d | 2005-01-29 | 2005-02-04 |  |  |
| 61 | 1.6.2.1 | Fonctions génériques | 5d | 2005-01-29 | 2005-02-04 |  | Adrien BOUVET |
| 62 | 1.6.2.2 | Mode Gestion | 5d | 2005-01-29 | 2005-02-04 |  | Guillaume GUERRIN |
| 63 | 1.6.2.3 | Mode Exploitation | 5d | 2005-01-29 | 2005-02-04 |  | Valère FOREL; Fabien APPERT |
| 64 | 1.6.2.4 | Mode Historique | 5d | 2005-01-29 | 2005-02-04 |  | Prâsad RAMASSAMY |
| 65 | 2 | Correction et mise en forme | 13d | 2005-02-08 | 2005-02-24 |  |  |
